# 2019

Schedule from GanttProject, 2019-09-23 to 2020-02-10.
B-rain project
Holidays every year on 01-01, 01-07, 02-23, 03-08, 05-01, 05-09, 06-12, 11-04

## Calendars

- Project calendar: Mon-Fri working; Sat-Sun off.

## Schedule

| ID | WBS | Task | Duration | Start | Finish | Predecessors |
| --- | --- | --- | --- | --- | --- | --- |
| 1 | 1 | **Prototype v 0.1** | 98d | 2019-09-23 | 2020-02-10 |  |
| 2 | 1.1 | **Left leg** | 76d | 2019-09-23 | 2020-01-09 |  |
| 3 | 1.1.1 | Insole controller | 10d | 2019-09-23 | 2019-10-04 |  |
| 4 | 1.1.2 | Hip controller | 10d | 2019-10-07 | 2019-10-18 | 3 |
| 5 | 1.1.3 | **Foot prosthesis** | 20d | 2019-09-23 | 2019-10-18 |  |
| 6 | 1.1.3.1 | Redesign for human pattern 1 | 5d | 2019-09-23 | 2019-09-27 |  |
| 7 | 1.1.3.2 | Implementation for humans | 5d | 2019-09-30 | 2019-10-04 | 6 |
| 8 | 1.1.3.3 | Redesign 2nd | 5d | 2019-10-07 | 2019-10-11 | 7 |
| 9 | 1.1.3.4 | Reimplementation | 5d | 2019-10-14 | 2019-10-18 | 8 |
| 10 | 1.1.4 | **Hip prosthesis** | 10d | 2019-10-14 | 2019-10-25 |  |
| 11 | 1.1.4.1 | Design | 5d | 2019-10-14 | 2019-10-18 | 8 |
| 12 | 1.1.4.2 | Implementation | 5d | 2019-10-21 | 2019-10-25 | 9, 11 |
| 13 | 1.1.5 | **Foot stimulator** | 20d | 2019-09-23 | 2019-10-18 |  |
| 14 | 1.1.5.1 | Design | 10d | 2019-09-23 | 2019-10-04 |  |
| 15 | 1.1.5.2 | Implementation | 10d | 2019-10-07 | 2019-10-18 | 14 |
| 16 | 1.1.6 | Hip stimulator | 10d | 2019-10-28 | 2019-11-11 | 10, 13 |
| 17 | 1.1.7 | Integration | 10d | 2019-11-12 | 2019-11-25 | 16 |
| 18 | 1.1.8 | **Validation** | 30d | 2019-11-27 | 2020-01-09 | 17 |
| 19 | 1.1.8.1 | 1st iteration | 5d | 2019-11-27 | 2019-12-03 |  |
| 20 | 1.1.8.2 | prosthesis tuning | 10d | 2019-12-04 | 2019-12-17 | 19 |
| 21 | 1.1.8.3 | 2nd iteration | 5d | 2019-12-18 | 2019-12-24 | 20 |
| 22 | 1.1.8.4 | prosthesis | 5d | 2019-12-25 | 2019-12-31 | 21 |
| 23 | 1.1.8.5 | 3rd iteration | 5d | 2020-01-02 | 2020-01-09 | 22 |
| 24 | 1.2 | **Right leg** | 22d | 2020-01-10 | 2020-02-10 | 2 |
| 25 | 1.2.1 | Balancer Design | 2d | 2020-01-10 | 2020-01-13 |  |
| 26 | 1.2.2 | Implementation | 5d | 2020-01-14 | 2020-01-20 | 25 |
| 27 | 1.2.3 | Validation | 15d | 2020-01-21 | 2020-02-10 | 26 |
| 28 | 2 | Marketing research | 10d | 2019-09-26 | 2019-10-09 |  |
| 29 | 3 | Accelerators research | 10d | 2019-10-10 | 2019-10-23 | 28 |
| 30 | 4 | Invitations | 5d | 2019-09-26 | 2019-10-02 |  |
| 31 | 5 | Visa processing | 60d | 2019-10-03 | 2019-12-26 | 30 |
| 32 | 6 | Business trip plan | 2d | 2020-01-14 | 2020-01-15 | 18, 25, 28, 29 |
